# API melhor

Schedule from MS Project, 2021-03-08 to 2021-06-06, 4 hours a day, costs in R$, A marks actual dates.

## Calendars

- API: Mon-Sun 10:00-14:00.

## Resources

| Resource | Rate |
| --- | --- |
| Ana Clara | 20 |
| Anna Yukimi | 20 |
| Bárbara Bidoia | 20 |
| Bárbara Port | 20 |
| Felipe Silva | 20 |
| Nicholas Roque | 20 |
| Giovanni Alves | 20 |
| Rafael Furtado | 20 |

## Schedule

| ID | WBS | Task | Duration | Start | Finish | Predecessors | Complete | Remaining | Baseline start | Baseline finish | Baseline duration | Total slack | Free slack | Constraint | Resources | Work | Actual work | Cost | Baseline cost | Actual cost |
| --- | --- | --- | --- | --- | --- | --- | --- | --- | --- | --- | --- | --- | --- | --- | --- | --- | --- | --- | --- | --- |
| 1 | 1 | **API** | 90d | 2021-03-08 A | 2021-06-06 |  | 43% | 50.99d | 2021-03-08 | 2021-06-06 | 90d | 0d |  |  |  | 2896h | 1344h | 57,920 | 69,760 | 26,880 |
| 2 | 1.1 | **Sprint 1** | 20d | 2021-03-08 A | 2021-03-28 A |  | 100% |  | 2021-03-08 | 2021-03-28 | 20d |  |  |  |  | 544h | 544h | 10,880 | 11,920 | 10,880 |
| 3 | 1.1.1 | Briefing | 1d | 2021-03-08 A | 2021-03-08 A |  | 100% |  | 2021-03-08 | 2021-03-08 | 1d |  |  | finish no earlier than 2021-03-08 | Bárbara Bidoia; Bárbara Port | 8h | 8h | 160 | 160 | 160 |
| 4 | 1.1.2 | User stories | 1d | 2021-03-09 A | 2021-03-09 A |  | 100% |  | 2021-03-09 | 2021-03-09 | 1d |  |  | finish no earlier than 2021-03-09 | Bárbara Port | 4h | 4h | 80 | 80 | 80 |
| 5 | 1.1.3 | Modelagem do banco de dados | 3d | 2021-03-10 A | 2021-03-11 A | 4 | 100% |  | 2021-03-10 | 2021-03-11 | 3d |  |  |  | Bárbara Port; Nicholas Roque; Rafael Furtado; Anna Yukimi; Felipe Silva | 60h | 60h | 1,200 | 1,200 | 1,200 |
| 6 | 1.1.4 | Wireframes | 6d | 2021-03-11 A | 2021-03-15 A | 5 | 100% |  | 2021-03-11 | 2021-03-15 | 6d |  |  | finish no earlier than 2021-03-12 | Bárbara Bidoia; Bárbara Port; Giovanni Alves | 72h | 72h | 1,440 | 1,440 | 1,440 |
| 7 | 1.1.5 | Priorização | 2d | 2021-03-13 A | 2021-03-14 A | 4 | 100% |  | 2021-03-13 | 2021-03-14 | 2d |  |  | finish no earlier than 2021-03-14 | Bárbara Bidoia; Bárbara Port; Nicholas Roque; Rafael Furtado | 32h | 32h | 640 | 640 | 640 |
| 8 | 1.1.6 | Desenvolvimento front | 11d | 2021-03-18 A | 2021-03-25 A | 6 | 100% |  | 2021-03-18 | 2021-03-25 | 11d |  |  | finish no earlier than 2021-03-25 | Ana Clara; Bárbara Port; Rafael Furtado; Giovanni Alves | 176h | 176h | 3,520 | 4,400 | 3,520 |
| 9 | 1.1.7 | Desenvolvimento back | 11d | 2021-03-18 A | 2021-03-25 A | 6 | 100% |  | 2021-03-18 | 2021-03-25 | 11d |  |  | finish no earlier than 2021-03-25 | Bárbara Port; Felipe Silva; Nicholas Roque; Rafael Furtado | 176h | 176h | 3,520 | 3,520 | 3,520 |
| 10 | 1.1.8 | Apresentação | 2d | 2021-03-26 A | 2021-03-28 A | 3, 4, 5, 6, 7, 8, 9 | 100% |  | 2021-03-26 | 2021-03-28 | 2d |  |  | finish no earlier than 2021-03-28 | Ana Clara; Rafael Furtado | 16h | 16h | 320 | 480 | 320 |
| 11 | 1.2 | **Sprint 2** | 21d | 2021-03-29 A | 2021-04-18 | 2 | 91% | 1.88d | 2021-03-29 | 2021-04-18 | 21d | 47d |  |  |  | 888h | 800h | 17,760 | 19,200 | 16,000 |
| 12 | 1.2.1 | Levantar novos requisitos | 10d | 2021-03-29 A | 2021-04-02 A |  | 100% |  | 2021-03-29 | 2021-04-02 | 10d |  |  | start no earlier than 2021-03-29 | Bárbara Port | 40h | 40h | 800 | 800 | 800 |
| 13 | 1.2.2 | Wireframes | 12d | 2021-03-29 A | 2021-04-05 A |  | 100% |  | 2021-03-29 | 2021-04-05 | 12d |  |  | start no earlier than 2021-03-29 | Anna Yukimi; Bárbara Bidoia; Giovanni Alves; Rafael Furtado | 192h | 192h | 3,840 | 3,840 | 3,840 |
| 14 | 1.2.3 | Desenvolvimento front | 16d | 2021-04-06 A | 2021-04-15 | 13 | 75% | 4d | 2021-04-06 | 2021-04-15 | 16d | 1d | 0d | finish no earlier than 2021-04-15 | Ana Clara; Bárbara Port; Giovanni Alves; Nicholas Roque; Rafael Furtado | 320h | 240h | 6,400 | 7,680 | 4,800 |
| 15 | 1.2.4 | Desenvolvimento back | 16d | 2021-04-06 A | 2021-04-15 A | 13 | 100% |  | 2021-04-06 | 2021-04-15 | 16d |  |  | finish no earlier than 2021-04-15 | Anna Yukimi; Bárbara Port; Felipe Silva; Nicholas Roque; Rafael Furtado | 320h | 320h | 6,400 | 6,400 | 6,400 |
| 16 | 1.2.5 | Apresentação | 2d | 2021-04-16 A | 2021-04-18 | 12, 13, 14, 15 | 50% | 1d | 2021-04-16 | 2021-04-18 | 2d | 47d |  | finish no earlier than 2021-04-18 | Ana Clara; Rafael Furtado | 16h | 8h | 320 | 480 | 160 |
| 17 | 1.3 | **Sprint 3** | 28d | 2021-04-19 | 2021-05-16 |  |  |  | 2021-04-19 | 2021-05-16 | 28d | 0d |  |  |  | 696h |  | 13,920 | 21,840 |  |
| 18 | 1.3.1 | Levantar novos requisitos | 9d | 2021-04-19 | 2021-04-23 |  |  |  | 2021-04-19 | 2021-04-23 | 9d | 19d |  | start no earlier than 2021-04-19 | Bárbara Port | 36h |  | 720 | 720 |  |
| 19 | 1.3.2 | Wireframes | 11d | 2021-04-19 | 2021-04-26 |  |  |  | 2021-04-19 | 2021-04-26 | 11d | 7d | 0d | finish no earlier than 2021-04-26 | Bárbara Bidoia; Bárbara Port; Rafael Furtado | 132h |  | 2,640 | 2,640 |  |
| 20 | 1.3.3 | Desenvolvimento front | 16d | 2021-04-27 | 2021-05-06 | 19 |  |  | 2021-04-27 | 2021-05-13 | 25d | 7d |  | start no earlier than 2021-04-27 | Ana Clara; Bárbara Port; Rafael Furtado | 192h |  | 3,840 | 8,000 |  |
| 21 | 1.3.4 | Desenvolvimento back | 16d | 2021-04-27 | 2021-05-06 | 19 |  |  | 2021-04-27 | 2021-05-13 | 25d | 7d |  | start no earlier than 2021-04-27 | Bárbara Port; Felipe Silva; Giovanni Alves; Nicholas Roque; Rafael Furtado | 320h |  | 6,400 | 10,000 |  |
| 22 | 1.3.5 | Apresentação | 2d | 2021-05-14 | 2021-05-16 | 18, 19, 20, 21 |  |  | 2021-05-14 | 2021-05-16 | 2d | 0d |  | finish no earlier than 2021-05-16 | Ana Clara; Rafael Furtado | 16h |  | 320 | 480 |  |
| 23 | 1.4 | **Sprint 4** | 21d | 2021-05-17 | 2021-06-06 | 17 |  |  | 2021-05-17 | 2021-06-06 | 21d | 0d |  |  |  | 768h |  | 15,360 | 16,800 |  |
| 24 | 1.4.1 | Levantar novos requisitos | 10d | 2021-05-17 | 2021-05-21 |  |  |  | 2021-05-17 | 2021-05-21 | 10d | 11d |  | start no earlier than 2021-05-17 | Bárbara Bidoia; Bárbara Port | 80h |  | 1,600 | 1,600 |  |
| 25 | 1.4.2 | Wireframes | 12d | 2021-05-17 | 2021-05-24 |  |  |  | 2021-05-17 | 2021-05-24 | 12d | 0d |  | start no earlier than 2021-05-17 | Bárbara Port; Rafael Furtado | 96h |  | 1,920 | 1,920 |  |
| 26 | 1.4.3 | Desenvolvimento front | 16d | 2021-05-25 | 2021-06-03 | 25 |  |  | 2021-05-25 | 2021-06-03 | 16d | 0d |  | start no earlier than 2021-05-25 | Ana Clara; Bárbara Port; Nicholas Roque; Rafael Furtado | 256h |  | 5,120 | 6,400 |  |
| 27 | 1.4.4 | Desenvolvimento back | 16d | 2021-05-25 | 2021-06-03 | 25 |  |  | 2021-05-25 | 2021-06-03 | 16d | 0d |  | start no earlier than 2021-05-25 | Bárbara Port; Felipe Silva; Giovanni Alves; Nicholas Roque; Rafael Furtado | 320h |  | 6,400 | 6,400 |  |
| 28 | 1.4.5 | Apresentação | 2d | 2021-06-04 | 2021-06-06 | 24, 25, 26, 27 |  |  | 2021-06-04 | 2021-06-06 | 2d | 0d |  | finish no earlier than 2021-06-06 | Ana Clara; Rafael Furtado | 16h |  | 320 | 480 |  |
